How a schedule from GanttProject changed from version to version. A marks actual dates.

## Version 1 (saved 2024-08-28)

Note of the change: ajout projet

| ID | WBS | Task | Duration | Start | Finish | Predecessors |
| --- | --- | --- | --- | --- | --- | --- |
| 1 | 1 | **Réunions de suivi** | 256d | 2025-01-27 | 2026-01-19 |  |
| 2 |  | réunion 1 | 1d | 2025-01-27 | 2025-01-27 |  |
| 3 |  | réunion 2 | 1d | 2025-02-03 | 2025-02-03 |  |
| 4 |  | réunion 3 | 1d | 2025-02-10 | 2025-02-10 |  |
| 5 |  | réunion 4 | 1d | 2025-02-17 | 2025-02-17 |  |
| 6 |  | réunion 5 | 1d | 2025-02-24 | 2025-02-24 |  |
| 7 |  | réunion 6 | 1d | 2025-03-03 | 2025-03-03 |  |
| 8 |  | réunion 7 | 1d | 2025-03-10 | 2025-03-10 |  |
| 9 |  | réunion 8 | 1d | 2025-03-17 | 2025-03-17 |  |
| 10 |  | réunion 9 | 1d | 2025-03-24 | 2025-03-24 |  |
| 11 |  | réunion 10 | 1d | 2025-03-31 | 2025-03-31 |  |
| 12 |  | réunion 11 | 1d | 2025-04-07 | 2025-04-07 |  |
| 13 |  | réunion 12 | 1d | 2025-04-14 | 2025-04-14 |  |
| 14 |  | réunion 13 | 1d | 2025-04-21 | 2025-04-21 |  |
| 15 |  | réunion 14 | 1d | 2025-04-28 | 2025-04-28 |  |
| 16 |  | réunion 15 | 1d | 2025-05-05 | 2025-05-05 |  |
| 17 |  | réunion 16 | 1d | 2025-05-12 | 2025-05-12 |  |
| 18 |  | réunion 17 | 1d | 2025-05-19 | 2025-05-19 |  |
| 19 |  | réunion 18 | 1d | 2025-05-26 | 2025-05-26 |  |
| 20 |  | réunion 19 | 1d | 2025-06-02 | 2025-06-02 |  |
| 21 |  | réunion 20 | 1d | 2025-06-09 | 2025-06-09 |  |
| 22 |  | réunion 21 | 1d | 2025-06-16 | 2025-06-16 |  |
| 23 |  | réunion 22 | 1d | 2025-06-23 | 2025-06-23 |  |
| 24 |  | réunion 23 | 1d | 2025-06-30 | 2025-06-30 |  |
| 25 |  | réunion 24 | 1d | 2025-07-07 | 2025-07-07 |  |
| 26 |  | réunion 25 | 1d | 2025-07-14 | 2025-07-14 |  |
| 27 |  | réunion 26 | 1d | 2025-07-21 | 2025-07-21 |  |
| 28 |  | réunion 27 | 1d | 2025-07-28 | 2025-07-28 |  |
| 29 |  | réunion 28 | 1d | 2025-08-04 | 2025-08-04 |  |
| 30 |  | réunion 29 | 1d | 2025-08-11 | 2025-08-11 |  |
| 31 |  | réunion 30 | 1d | 2025-08-18 | 2025-08-18 |  |
| 32 |  | réunion 31 | 1d | 2025-08-25 | 2025-08-25 |  |
| 33 |  | réunion 32 | 1d | 2025-09-01 | 2025-09-01 |  |
| 34 |  | réunion 33 | 1d | 2025-09-08 | 2025-09-08 |  |
| 35 |  | réunion 34 | 1d | 2025-09-15 | 2025-09-15 |  |
| 36 |  | réunion 35 | 1d | 2025-09-22 | 2025-09-22 |  |
| 37 |  | réunion 36 | 1d | 2025-09-29 | 2025-09-29 |  |
| 38 |  | réunion 37 | 1d | 2025-10-06 | 2025-10-06 |  |
| 39 |  | réunion 38 | 1d | 2025-10-13 | 2025-10-13 |  |
| 40 |  | réunion 39 | 1d | 2025-10-20 | 2025-10-20 |  |
| 41 |  | réunion 40 | 1d | 2025-10-27 | 2025-10-27 |  |
| 42 |  | réunion 41 | 1d | 2025-11-03 | 2025-11-03 |  |
| 43 |  | réunion 42 | 1d | 2025-11-10 | 2025-11-10 |  |
| 44 |  | réunion 43 | 1d | 2025-11-17 | 2025-11-17 |  |
| 45 |  | réunion 44 | 1d | 2025-11-24 | 2025-11-24 |  |
| 46 |  | réunion 45 | 1d | 2025-12-01 | 2025-12-01 |  |
| 47 |  | réunion 46 | 1d | 2025-12-08 | 2025-12-08 |  |
| 48 |  | réunion 47 | 1d | 2025-12-15 | 2025-12-15 |  |
| 49 |  | réunion 48 | 1d | 2025-12-22 | 2025-12-22 |  |
| 50 |  | réunion 49 | 1d | 2025-12-29 | 2025-12-29 |  |
| 51 |  | réunion 50 | 1d | 2026-01-05 | 2026-01-05 |  |
| 52 |  | réunion 51 | 1d | 2026-01-12 | 2026-01-12 |  |
| 53 |  | réunion 52 | 1d | 2026-01-19 | 2026-01-19 |  |
| 54 | 2 | **Sujet des réunions** | 6d | 2025-01-27 | 2025-02-03 |  |
| 55 |  | Présentation des équipes | 1d | 2025-01-27 | 2025-01-27 | 2SS |
| 56 |  | Présentation du prototype | 1d | 2025-02-03 | 2025-02-03 | 3SS |
| 57 |  | Présentation de l'écosystème BnF - Huma-Num | 1d | 2025-02-03 | 2025-02-03 | 3SS |
| 58 |  | Spécification de l'écosystème | 1d | 2025-01-01 | 2025-01-01 |  |

## Version 2 (saved 2024-08-29)

Note of the change: Ajout Gantt

Last finish 2026-01-19 → 2026-02-04 (+16d).

Added:

| ID | Task | Duration | Start | Finish | Predecessors | Resources |
| --- | --- | --- | --- | --- | --- | --- |
| 58 | Présentations des expertises | 0d | 2025-03-10 | 2025-03-10 | 68 |  |
| 59 | Présentation des spécifications | 0d | 2025-04-21 | 2025-04-21 | 69 |  |
| 60 | Présentation des IHM d'éditorialisation | 0d | 2025-05-19 | 2025-05-19 | 79 |  |
| 61 | Présentation du processus de transcription | 0d | 2025-06-26 | 2025-06-26 | 70 |  |
| 62 | Présentation du protocole d'éditorialisation | 0d | 2025-07-24 | 2025-07-24 | 83 |  |
| 63 | Présentation des bêta-tests | 0d | 2025-10-02 | 2025-10-02 | 88 |  |
| 64 | Mise en production | 0d | 2025-10-16 | 2025-10-16 | 92 |  |
| 65 | Ouverture Journée d'étude | 0d | 2026-01-21 | 2026-01-21 | 95 |  |
| 66 | Jury Hackathon | 0d | 2026-01-26 | 2026-01-26 | 96 |  |
| 67 | **Conception et développement** | 178d | 2025-01-27 | 2025-10-01 |  |  |
| 68 | Consultations des experts | 30d | 2025-01-27 | 2025-03-07 | 57 | Samuel Szoniecky [50%]; Gabrielle Godin; Expert 1 [5%]; Expert 2 [5%]; Expert 3 [5%] |
| 70 | **Processus de transcription automatique** | 48d | 2025-04-21 | 2025-06-25 | 69 |  |
| 71 | Développement base de données | 5d | 2025-04-21 | 2025-04-25 | 69 | Samuel Szoniecky; Contact BnF DataLab [20%]; Contact Huma-Num [20%] |
| 72 | Développement API | 6d | 2025-04-28 | 2025-05-05 | 71 | Samuel Szoniecky; Contact BnF DataLab [10%]; Contact Huma-Num [10%] |
| 73 | Développement IHM BackOffice | 5d | 2025-05-06 | 2025-05-12 | 72 | Samuel Szoniecky [50%]; Gabrielle Godin |
| 74 | Tests des transcriptions | 5d | 2025-05-13 | 2025-05-19 | 73 | Gabrielle Godin |
| 75 | Benchmark solutions de transcription | 7d | 2025-05-20 | 2025-05-28 | 74 | Samuel Szoniecky |
| 76 | Traitement des collections numériques | 20d | 2025-05-29 | 2025-06-25 | 75 | Gabrielle Godin |
| 77 | Documentations | 10d | 2025-06-12 | 2025-06-25 | 76FF | Samuel Szoniecky [50%]; Gabrielle Godin; Stagiaire 1; Stagiaire 2 |
| 78 | **Protocole d'éditorialisation** | 68d | 2025-04-21 | 2025-07-23 |  |  |
| 79 | Design des IHMs | 20d | 2025-04-21 | 2025-05-16 | 69 | Samuel Szoniecky [50%]; Gabrielle Godin; Stagiaire 1; Stagiaire 2 |
| 80 | Développement des modules JS | 20d | 2025-06-26 | 2025-07-23 | 76 | Samuel Szoniecky; Stagiaire 1; Stagiaire 2 |
| 81 | Intégration HTML CSS | 30d | 2025-06-12 | 2025-07-23 | 79, 80FF | Samuel Szoniecky [50%]; Stagiaire 1; Stagiaire 2 |
| 82 | Tests d'éditorialisation | 10d | 2025-07-10 | 2025-07-23 | 81FF | Gabrielle Godin; Contact BnF DataLab [20%]; Contact Huma-Num [20%]; Stagiaire 1; Stagiaire 2 |
| 83 | Documentations | 15d | 2025-07-03 | 2025-07-23 | 82FF | Gabrielle Godin; Stagiaire 1; Stagiaire 2 |
| 84 | **Pré-production** | 50d | 2025-07-24 | 2025-10-01 |  |  |
| 85 | Déploiement de la pré-prodruction | 10d | 2025-07-24 | 2025-08-06 | 83 | Samuel Szoniecky; Contact BnF DataLab [20%]; Contact Huma-Num [20%]; Stagiaire 1; Stagiaire 2 |
| 86 | Bêta-tests experts | 20d | 2025-08-07 | 2025-09-03 | 85 | Gabrielle Godin; Expert 1 [5%]; Expert 2 [5%]; Expert 3 [5%]; Stagiaire 1; Stagiaire 2 |
| 87 | Corrections des demandes | 10d | 2025-09-04 | 2025-09-17 | 86 | Samuel Szoniecky; Stagiaire 1; Stagiaire 2 |
| 88 | Documentations | 10d | 2025-09-18 | 2025-10-01 | 87 | Gabrielle Godin; Stagiaire 1; Stagiaire 2 |
| 89 | **Production** | 10d | 2025-10-02 | 2025-10-15 |  |  |
| 90 | Déploiement en production | 5d | 2025-10-02 | 2025-10-08 | 88 | Samuel Szoniecky; Contact BnF DataLab; Contact Huma-Num |
| 91 | Tests de production | 5d | 2025-10-02 | 2025-10-08 | 90FF | Gabrielle Godin |
| 92 | Documentations | 5d | 2025-10-09 | 2025-10-15 | 91 | Gabrielle Godin |
| 93 | **Valorisations** | 80d | 2025-10-16 | 2026-02-04 |  |  |
| 94 | Rédactions articles scientifiques | 80d | 2025-10-16 | 2026-02-04 | 92 | Samuel Szoniecky; Gabrielle Godin; Contact BnF DataLab [50%]; Contact Huma-Num [50%] |
| 95 | Journée d'études | 2d | 2026-01-19 | 2026-01-20 |  | Samuel Szoniecky; Gabrielle Godin; Equipe pédagogique P8; Etudiants Master Humanités Numériques |
| 96 | Hakhaton | 3d | 2026-01-21 | 2026-01-23 | 95 | Samuel Szoniecky; Gabrielle Godin; Equipe pédagogique P8; Etudiants Master Humanités Numériques |

Changed:

| ID | Task | Start | Finish | Duration | Predecessors | Other |
| --- | --- | --- | --- | --- | --- | --- |
| 1 | **Réunions de suivi** |  |  |  |  | resources none → Samuel Szoniecky; Gabrielle Godin; Contact BnF DataLab; Contact Huma-Num |
| 54 | **Sujet des réunions** |  | 2025-02-03 → 2026-01-23 (+354d) | 6d → 260d |  | resources none → Samuel Szoniecky; Gabrielle Godin; Contact BnF DataLab; Contact Huma-Num |
| 55 | Présentation des équipes |  |  | 1d → 0d |  |  |
| 56 | Présentation du prototype | 2025-02-03 → 2025-01-27 (-7d) | 2025-02-03 → 2025-01-27 (-7d) | 1d → 0d | 3SS → 55SS |  |
| 57 | Présentation de l'écosystème BnF - Huma-Num | 2025-02-03 → 2025-01-27 (-7d) | 2025-02-03 → 2025-01-27 (-7d) | 1d → 0d | 3SS → 56SS |  |
| 69 | Spécification de l'écosystème | 2025-01-01 → 2025-03-10 (+68d) | 2025-01-01 → 2025-04-18 (+107d) | 1d → 30d | none → 68 | resources none → Samuel Szoniecky; Gabrielle Godin [50%]; Contact BnF DataLab [10%]; Contact Huma-Num [10%] |
